# Cronograma

How a schedule from MS Project changed from version to version. A marks actual dates.

## Version 1 (saved 2008-10-16)

| ID | WBS | Task | Duration | Start | Finish | Predecessors | Complete | Total float | Constraint |
| --- | --- | --- | --- | --- | --- | --- | --- | --- | --- |
| 1 | 1 | **BPAD** | 47d | 2008-10-03 08:00 A | 2008-12-05 08:00 |  | 4% | 0d |  |
| 2 | 1.1 | **Realese 1** | 15.12d | 2008-10-03 08:00 A | 2008-10-23 09:00 |  | 35% | 26.38d |  |
| 3 |  | Brainstorm Documentação | 1h | 2008-10-03 08:00 | 2008-10-03 09:00 |  |  | 58.88d | start no earlier than 2008-10-03 08:00 |
| 4 |  | Publicar Cronograma no SVN | 1h | 2008-10-03 08:00 | 2008-10-03 09:00 |  |  | 58.88d | start no earlier than 2008-10-03 08:00 |
| 5 | 1.1.3 | **Criação do Banco de Dados** | 0.38d | 2008-10-03 08:00 A | 2008-10-03 11:00 A |  | 100% |  |  |
| 6 |  | Script SQL | 2h | 2008-10-03 08:00 A | 2008-10-03 10:00 A |  | 100% |  | start no earlier than 2008-10-03 08:00 |
| 7 |  | Popular Tabelas Auxiliares ao Banco | 1h | 2008-10-03 10:00 A | 2008-10-03 11:00 A | 6 | 100% |  |  |
| 8 |  | Modelo de Navegação | 2h | 2008-10-03 08:00 | 2008-10-03 10:00 |  |  | 58.75d | start no earlier than 2008-10-03 08:00 |
| 9 |  | Criação de Protótipo de Interface | 16h | 2008-10-06 08:00 A | 2008-10-07 17:00 A |  | 100% |  | finish no earlier than 2008-10-07 17:00 |
| 10 | 1.1.6 | **Implementação dos Casos de Uso Mobile** | 1d | 2008-10-08 08:00 A | 2008-10-08 17:00 A |  | 100% |  |  |
| 11 |  | Efetuar Login | 8h | 2008-10-08 08:00 A | 2008-10-08 17:00 A | 7, 9 | 100% |  | start no earlier than 2008-10-08 08:00 |
| 12 | 1.1.7 | **Implementação dos Casos de Uso Web** | 4.62d | 2008-10-04 11:00 | 2008-10-09 17:00 |  |  | 8d |  |
| 13 |  | Efetuar Login | 13h | 2008-10-04 11:00 | 2008-10-06 17:00 | 7 |  | 8d | finish no earlier than 2008-10-06 17:00 |
| 14 |  | Cadastrar Unidade de Saude | 8h | 2008-10-07 08:00 | 2008-10-07 17:00 | 13 |  | 50.75d | finish no earlier than 2008-10-07 17:00 |
| 15 |  | Atualizar Unidade de Saude | 8h | 2008-10-08 08:00 | 2008-10-08 17:00 | 14 |  | 50.75d | finish no earlier than 2008-10-08 17:00 |
| 16 |  | Consultar Unidade de Saude | 8h | 2008-10-09 08:00 | 2008-10-09 17:00 | 15 |  | 50.75d | finish no earlier than 2008-10-09 17:00 |
| 17 |  | Homologação da release | 4h | 2008-10-16 08:00 | 2008-10-16 12:00 | 7, 11, 16 |  | 4d | start no earlier than 2008-10-16 08:00 |
| 18 |  | Criação da apresentação da realese 1 | 2h | 2008-10-16 13:00 | 2008-10-16 15:00 | 17 |  | 4d | finish no earlier than 2008-10-15 17:00 |
| 19 |  | Reunião de acompanhamento | 2h | 2008-10-16 15:00 | 2008-10-16 17:00 | 18 |  | 4d |  |
| 20 |  | Entrega da realese 1 (Apresentção) | 1h | 2008-10-23 08:00 | 2008-10-23 09:00 | 18, 19 |  | 11d | start no earlier than 2008-10-23 08:00 |
| 21 |  | Final da realese 1 | 0d | 2008-10-23 09:00 | 2008-10-23 09:00 | 20 |  | 11d | start no earlier than 2008-10-17 08:00 |
| 22 | 1.2 | **Realese 2** | 9.88d | 2008-10-23 09:00 | 2008-11-06 08:00 | 21 |  | 11d |  |
| 23 | 1.2.1 | **Implementação dos Casos de Uso Mobile** | 5.12d | 2008-10-23 09:00 | 2008-10-30 10:00 |  |  | 21.25d |  |
| 24 |  | Cadastrar Paciente | 32h | 2008-10-23 09:00 | 2008-10-29 09:00 |  |  | 22.12d | finish no earlier than 2008-10-23 17:00 |
| 25 |  | Consultar Paciente | 32h | 2008-10-23 09:00 | 2008-10-29 09:00 | 24SS |  | 22.12d | finish no earlier than 2008-10-23 17:00 |
| 26 |  | Atualizar Paciente | 32h | 2008-10-23 09:00 | 2008-10-29 09:00 | 25SS |  | 22.38d | finish no earlier than 2008-10-23 17:00 |
| 27 |  | Preencher Ficha Diária | 32h | 2008-10-23 09:00 | 2008-10-29 09:00 | 26SS |  | 22.12d | finish no earlier than 2008-10-23 17:00 |
| 28 |  | Reunião de acompanhamento | 2h | 2008-10-30 08:00 | 2008-10-30 10:00 | 24, 25, 27 |  | 21.25d | start no earlier than 2008-10-30 08:00 |
| 29 | 1.2.2 | **Implementação dos Casos de Uso Web** | 6.5d | 2008-10-23 09:00 | 2008-10-31 14:00 |  |  | 11d |  |
| 30 |  | Cadastrar Paciente | 16h | 2008-10-23 09:00 | 2008-10-27 09:00 |  |  | 2d |  |
| 31 |  | Atualizar Paciente | 24h | 2008-10-23 09:00 | 2008-10-28 09:00 |  |  | 1d |  |
| 32 |  | Consultar Paciente | 32h | 2008-10-23 09:00 | 2008-10-29 09:00 |  |  | 11d |  |
| 33 |  | Cadastrar Profissional de Saude | 32h | 2008-10-23 09:00 | 2008-10-29 09:00 |  |  | 11d |  |
| 34 |  | Atualizar Profissional de Saude | 32h | 2008-10-23 09:00 | 2008-10-29 09:00 |  |  | 11d |  |
| 35 |  | Consultar Profissional de Saude | 32h | 2008-10-23 09:00 | 2008-10-29 09:00 |  |  | 11d |  |
| 36 |  | Homologação da release | 8h | 2008-10-29 09:00 | 2008-10-30 09:00 | 35, 30, 31, 32, 33, 34 |  | 11d |  |
| 37 |  | Criação da apresentação da release 2 | 8h | 2008-10-30 09:00 | 2008-10-31 09:00 | 36 |  | 11d |  |
| 38 |  | Reunião de acompanhamento | 2h | 2008-10-31 09:00 | 2008-10-31 11:00 | 37 |  | 11d |  |
| 39 |  | Entrega da Realese 2 (Apresentação) | 2h | 2008-10-31 11:00 | 2008-10-31 14:00 | 38 |  | 11d |  |
| 40 |  | Final Realese 2 | 0d | 2008-11-06 08:00 | 2008-11-06 08:00 | 39 |  | 7.62d | start no earlier than 2008-11-06 08:00 |
| 41 | 1.3 | **Realese 3** | 11.88d | 2008-11-06 08:00 | 2008-11-21 16:00 | 40 |  | 7.62d |  |
| 42 | 1.3.1 | **Implementação dos Casos de Uso Mobile** | 6.62d | 2008-11-06 08:00 | 2008-11-14 14:00 |  |  | 7.62d |  |
| 43 |  | Atualizar Ficha Diária | 8h | 2008-11-06 08:00 | 2008-11-06 17:00 |  |  | 7.62d |  |
| 44 |  | Consultar Ficha Diária | 8h | 2008-11-06 08:00 | 2008-11-06 17:00 | 43SS |  | 7.62d |  |
| 45 |  | Sincronizar Dados com Servidor | 51h | 2008-11-06 08:00 | 2008-11-14 11:00 | 44SS |  | 7.62d |  |
| 46 |  | Popular Banco de Dados no Servidor | 8h | 2008-11-06 08:00 | 2008-11-06 17:00 | 45SS |  | 13d |  |
| 47 |  | Reunião de Acompanhamento | 2h | 2008-11-14 11:00 | 2008-11-14 14:00 | 43, 44, 45, 46 |  | 7.62d |  |
| 48 | 1.3.2 | **Implementação dos Casos de Uso Web** | 4.25d | 2008-11-14 14:00 | 2008-11-20 16:00 | 47 |  | 7.62d |  |
| 49 |  | Consolidar BPA | 32h | 2008-11-14 14:00 | 2008-11-20 14:00 |  |  | 7.62d |  |
| 50 |  | Gerar Relatório | 32h | 2008-11-14 14:00 | 2008-11-20 14:00 | 49SS |  | 7.62d |  |
| 51 |  | Sincronizar Dispositivel Móvel | 32h | 2008-11-14 14:00 | 2008-11-20 14:00 | 50SS |  | 7.62d |  |
| 52 |  | Reunião de acompanhamento | 2h | 2008-11-20 14:00 | 2008-11-20 16:00 | 49, 50, 51 |  | 7.62d |  |
| 53 |  | Homologação da release | 2h | 2008-11-20 16:00 | 2008-11-21 09:00 | 42, 48 |  | 7.62d |  |
| 54 |  | Criação da apresentação da release 3 | 2h | 2008-11-21 09:00 | 2008-11-21 11:00 | 53 |  | 7.62d |  |
| 55 |  | Reunião de acompanhamento | 2h | 2008-11-21 11:00 | 2008-11-21 14:00 | 54 |  | 7.62d |  |
| 56 |  | Entrega da Realese 3 (Apresentação) | 2h | 2008-11-21 14:00 | 2008-11-21 16:00 | 55 |  | 7.62d |  |
| 57 |  | Final Realese 3 | 0d | 2008-11-21 16:00 | 2008-11-21 16:00 | 56 |  | 7.62d | start no earlier than 2008-11-21 08:00 |
| 58 | 1.4 | **Release 4** | 10.12d | 2008-11-21 16:00 | 2008-12-05 08:00 | 57 |  | 0d |  |
| 59 |  | Criação da apresentação final (Documentação) | 8h | 2008-11-21 16:00 | 2008-11-22 16:00 |  |  | 7.62d |  |
| 60 |  | Criação da apresentação final (Diagramação) | 8h | 2008-11-21 16:00 | 2008-11-22 16:00 | 59SS |  | 7.62d |  |
| 61 |  | Criação da apresentação final (Banco de Dados) | 8h | 2008-11-21 16:00 | 2008-11-22 16:00 | 60SS |  | 7.62d |  |
| 62 |  | Criação da apresentação final (Interfaces) | 8h | 2008-11-21 16:00 | 2008-11-22 16:00 | 61SS |  | 7.62d |  |
| 63 |  | Reunião de acompanhamento | 2h | 2008-11-22 16:00 | 2008-11-24 09:00 | 62, 59, 60, 61 |  | 7.62d |  |
| 64 |  | Criação da apresentação final (Fusão) | 6h | 2008-11-24 09:00 | 2008-11-24 16:00 | 63, 59, 60, 61, 62 |  | 7.62d |  |
| 65 |  | Entrega da Realese 4 (Ensaio) | 4h | 2008-11-24 16:00 | 2008-11-25 11:00 | 64 |  | 7.62d |  |
| 66 |  | Final Realese 3 | 0d | 2008-12-05 08:00 | 2008-12-05 08:00 | 65 |  | 0d | start no earlier than 2008-12-05 08:00 |

## Version 2 (saved 2008-10-18)

Last finish stays 2008-12-05. Complete tasks 4 → 6.

Changed:

| ID | Task | Start | Finish | Complete | Total float | Other |
| --- | --- | --- | --- | --- | --- | --- |
| 1 | **BPAD** |  |  | 4% → 5% | 0d → 12d |  |
| 2 | **Realese 1** |  |  | 35% → 39% | 26.38d → 43.88d |  |
| 4 | Publicar Cronograma no SVN | 2008-10-03 08:00 A | 2008-10-03 09:00 A | 0% → 100% | 58.88d → none |  |
| 8 | Modelo de Navegação | 2008-10-03 08:00 A | 2008-10-03 10:00 A | 0% → 100% | 58.75d → none |  |
| 18 | Criação da apresentação da realese 1 | 2008-10-16 13:00 → 2008-10-21 08:00 (+5d) | 2008-10-16 15:00 → 2008-10-21 10:00 (+5d) |  | 4d → 12.5d | constraint finish no earlier than 2008-10-15 17:00 → start no earlier than 2008-10-21 08:00 |
| 19 | Reunião de acompanhamento | 2008-10-16 15:00 → 2008-10-22 08:00 (+6d) | 2008-10-16 17:00 → 2008-10-22 10:00 (+6d) |  | 4d → 11.75d | constraint none → start no earlier than 2008-10-22 08:00 |

## Version 3 (saved 2008-10-22)

Last finish stays 2008-12-05. Complete tasks 6 → 3.

Changed:

| ID | Task | Start | Finish | Duration | Complete | Total float | Other |
| --- | --- | --- | --- | --- | --- | --- | --- |
| 1 | **BPAD** |  |  |  | 5% → 4% | 12d → 0d |  |
| 2 | **Realese 1** |  | 2008-10-23 09:00 → 2008-10-23 17:00 | 15.12d → 16d | 39% → 25% | 43.88d → 31d |  |
| 3 | Brainstorm Documentação |  | 2008-10-03 09:00 → 2008-10-03 17:00 | 1h → 8h |  | 58.88d → 46d |  |
| 4 | Publicar Cronograma no SVN |  | 2008-10-03 09:00 A → 2008-10-03 17:00 | 1h → 8h | 100% → 13% | none → 46d |  |
| 5 | **Criação do Banco de Dados** |  | 2008-10-03 11:00 A → 2008-10-03 17:00 | 0.38d → 1d | 100% → 33% | none → 46d |  |
| 6 | Script SQL |  | 2008-10-03 10:00 A → 2008-10-03 17:00 | 2h → 8h | 100% → 25% | none → 46d |  |
| 8 | Modelo de Navegação |  | 2008-10-03 10:00 A → 2008-10-03 17:00 | 2h → 8h | 100% → 25% | none → 46d |  |
| 12 | **Implementação dos Casos de Uso Web** | 2008-10-04 11:00 → 2008-10-04 08:00 |  | 4.62d → 5d |  | 8d → 15.62d |  |
| 13 | Efetuar Login | 2008-10-04 11:00 → 2008-10-04 08:00 | 2008-10-06 17:00 → 2008-10-04 17:00 (-2d) | 13h → 8h |  | 8d → 16.62d | constraint finish no earlier than 2008-10-06 17:00 → start no earlier than 2008-10-04 08:00 |
| 17 | Homologação da release |  | 2008-10-16 12:00 → 2008-10-16 17:00 | 4h → 8h |  | 4d → 11.62d |  |
| 18 | Criação da apresentação da realese 1 |  | 2008-10-21 10:00 → 2008-10-21 17:00 | 2h → 8h |  | 12.5d → 9.62d |  |
| 19 | Reunião de acompanhamento |  | 2008-10-22 10:00 → 2008-10-22 17:00 | 2h → 8h |  | 11.75d → 9.62d |  |
| 20 | Entrega da realese 1 (Apresentção) |  | 2008-10-23 09:00 → 2008-10-23 17:00 | 1h → 8h |  | 11d → 9.62d |  |
| 21 | Final da realese 1 | 2008-10-23 09:00 → 2008-10-23 17:00 | 2008-10-23 09:00 → 2008-10-23 17:00 |  |  | 11d → 9.62d |  |
| 22 | **Realese 2** | 2008-10-23 09:00 → 2008-10-24 08:00 (+1d) |  | 9.88d → 9d |  | 11d → 9.62d |  |
| 23 | **Implementação dos Casos de Uso Mobile** | 2008-10-23 09:00 → 2008-10-24 08:00 (+1d) | 2008-10-30 10:00 → 2008-10-30 17:00 | 5.12d → 5d |  | 21.25d → 26d |  |
| 24 | Cadastrar Paciente | 2008-10-23 09:00 → 2008-10-24 08:00 (+1d) | 2008-10-29 09:00 → 2008-10-29 17:00 |  |  | 22.12d → 26d |  |
| 25 | Consultar Paciente | 2008-10-23 09:00 → 2008-10-24 08:00 (+1d) | 2008-10-29 09:00 → 2008-10-29 17:00 |  |  | 22.12d → 26d |  |
| 26 | Atualizar Paciente | 2008-10-23 09:00 → 2008-10-24 08:00 (+1d) | 2008-10-29 09:00 → 2008-10-29 17:00 |  |  | 22.38d → 27d |  |
| 27 | Preencher Ficha Diária | 2008-10-23 09:00 → 2008-10-24 08:00 (+1d) | 2008-10-29 09:00 → 2008-10-29 17:00 |  |  | 22.12d → 26d |  |
| 28 | Reunião de acompanhamento |  | 2008-10-30 10:00 → 2008-10-30 17:00 | 2h → 8h |  | 21.25d → 26d |  |
| 29 | **Implementação dos Casos de Uso Web** | 2008-10-23 09:00 → 2008-10-24 08:00 (+1d) | 2008-10-31 14:00 → 2008-11-03 17:00 (+3d) | 6.5d → 7d |  | 11d → 9.62d |  |
| 30 | Cadastrar Paciente | 2008-10-23 09:00 → 2008-10-24 08:00 (+1d) | 2008-10-27 09:00 → 2008-10-27 17:00 |  |  | 2d → 11.62d |  |
| 31 | Atualizar Paciente | 2008-10-23 09:00 → 2008-10-24 08:00 (+1d) | 2008-10-28 09:00 → 2008-10-28 17:00 |  |  | 1d → 10.62d |  |
| 32 | Consultar Paciente | 2008-10-23 09:00 → 2008-10-24 08:00 (+1d) | 2008-10-29 09:00 → 2008-10-29 17:00 |  |  | 11d → 9.62d |  |
| 33 | Cadastrar Profissional de Saude | 2008-10-23 09:00 → 2008-10-24 08:00 (+1d) | 2008-10-29 09:00 → 2008-10-29 17:00 |  |  | 11d → 9.62d |  |
| 34 | Atualizar Profissional de Saude | 2008-10-23 09:00 → 2008-10-24 08:00 (+1d) | 2008-10-29 09:00 → 2008-10-29 17:00 |  |  | 11d → 9.62d |  |
| 35 | Consultar Profissional de Saude | 2008-10-23 09:00 → 2008-10-24 08:00 (+1d) | 2008-10-29 09:00 → 2008-10-29 17:00 |  |  | 11d → 9.62d |  |
| 36 | Homologação da release | 2008-10-29 09:00 → 2008-10-30 08:00 (+1d) | 2008-10-30 09:00 → 2008-10-30 17:00 |  |  | 11d → 9.62d |  |
| 37 | Criação da apresentação da release 2 | 2008-10-30 09:00 → 2008-10-31 08:00 (+1d) | 2008-10-31 09:00 → 2008-10-31 17:00 |  |  | 11d → 9.62d |  |
| 38 | Reunião de acompanhamento | 2008-10-31 09:00 → 2008-11-03 08:00 (+3d) | 2008-10-31 11:00 → 2008-11-03 10:00 (+3d) |  |  | 11d → 9.62d |  |
| 39 | Entrega da Realese 2 (Apresentação) | 2008-10-31 11:00 → 2008-11-03 10:00 (+3d) | 2008-10-31 14:00 → 2008-11-03 17:00 (+3d) | 2h → 6h |  | 11d → 9.62d | constraint none → start no earlier than 2008-11-03 08:00 |

## Version 4 (saved 2008-11-28)

Last finish stays 2008-12-05. Complete tasks 3 → 30.

Added:

| ID | Task | Duration | Start | Finish | Constraint | Resources |
| --- | --- | --- | --- | --- | --- | --- |
| 33 | Preencher Ficha Diária Web | 32h | 2008-10-24 08:00 | 2008-10-29 17:00 | finish no earlier than 2008-10-23 17:00 | Humberto Marques |

Changed:

| ID | Task | Start | Finish | Duration | Complete | Total float | Predecessors | Other |
| --- | --- | --- | --- | --- | --- | --- | --- | --- |
| 1 | **BPAD** |  |  |  | 4% → 63% |  |  |  |
| 2 | **Realese 1** |  |  |  | 25% → 97% |  |  |  |
| 3 | Brainstorm Documentação | 2008-10-03 08:00 A | 2008-10-03 17:00 A |  | 0% → 100% | 46d → none |  |  |
| 4 | Publicar Cronograma no SVN |  | 2008-10-03 17:00 A |  | 13% → 100% | 46d → none |  |  |
| 5 | **Criação do Banco de Dados** |  | 2008-10-03 17:00 A |  | 33% → 100% | 46d → none |  |  |
| 6 | Script SQL |  | 2008-10-03 17:00 A |  | 25% → 100% | 46d → none |  |  |
| 8 | Modelo de Navegação |  | 2008-10-03 17:00 A |  | 25% → 100% | 46d → none |  |  |
| 11 | Efetuar Login Mobile |  |  |  |  |  |  | was named Efetuar Login |
| 12 | **Implementação dos Casos de Uso Web** | 2008-10-04 08:00 A |  |  | 0% → 88% | 15.62d → 41d |  |  |
| 13 | Efetuar Login | 2008-10-04 08:00 A |  |  | 0% → 50% | 16.62d → 45d |  |  |
| 14 | Cadastrar Unidade de Saude Web | 2008-10-07 08:00 A | 2008-10-07 17:00 A |  | 0% → 100% | 15.62d → none |  | was named Cadastrar Unidade de Saude |
| 15 | Atualizar Unidade de Saude Web | 2008-10-08 08:00 A | 2008-10-08 17:00 A |  | 0% → 100% | 15.62d → none |  | was named Atualizar Unidade de Saude |
| 16 | Consultar Unidade de Saude Web | 2008-10-09 08:00 A | 2008-10-09 17:00 A |  | 0% → 100% | 15.62d → none |  | was named Consultar Unidade de Saude |
| 17 | Homologação da release 1 | 2008-10-16 08:00 A | 2008-10-16 17:00 A |  | 0% → 100% | 11.62d → none |  | was named Homologação da release |
| 18 | Criação da apresentação da realese 1 | 2008-10-21 08:00 A | 2008-10-21 17:00 A |  | 0% → 100% | 9.62d → none |  |  |
| 19 | Reunião de acompanhamento 1 | 2008-10-22 08:00 A | 2008-10-22 17:00 A |  | 0% → 100% | 9.62d → none |  | was named Reunião de acompanhamento |
| 20 | Entrega da realese 1 (Apresentção) | 2008-10-23 08:00 A | 2008-10-23 17:00 A |  | 0% → 100% | 9.62d → none |  |  |
| 21 | Final da realese 1 | 2008-10-23 17:00 A |  |  | 0% → 95% | 9.62d → 0d |  |  |
| 22 | **Realese 2** | 2008-10-24 08:00 A | 2008-11-06 08:00 → 2008-11-13 08:00 (+7d) | 9d → 14d | 0% → 87% | 9.62d → 17d |  |  |
| 23 | **Implementação dos Casos de Uso Mobile** | 2008-10-24 08:00 A | 2008-10-30 17:00 A |  | 0% → 100% | 26d → none |  |  |
| 24 | Cadastrar Paciente Mobile | 2008-10-24 08:00 A | 2008-10-29 17:00 A |  | 0% → 100% | 26d → none |  | was named Cadastrar Paciente |
| 25 | Consultar Paciente Mobile | 2008-10-24 08:00 A | 2008-10-29 17:00 A |  | 0% → 100% | 26d → none |  | was named Consultar Paciente |
| 26 | Atualizar Paciente Mobile | 2008-10-24 08:00 A | 2008-10-29 17:00 A |  | 0% → 100% | 27d → none |  | was named Atualizar Paciente |
| 27 | Preencher Ficha Diária Mobile | 2008-10-24 08:00 A | 2008-10-29 17:00 A |  | 0% → 100% | 26d → none |  | was named Preencher Ficha Diária |
| 28 | Reunião de acompanhamento release 2 | 2008-10-30 08:00 A | 2008-10-30 17:00 A |  | 0% → 100% | 26d → none |  | was named Reunião de acompanhamento |
| 29 | **Implementação dos Casos de Uso Web** | 2008-10-24 08:00 A |  |  | 0% → 80% | 9.62d → 24d |  |  |
| 30 | Cadastrar Paciente Web | 2008-10-24 08:00 A | 2008-10-27 17:00 A |  | 0% → 100% | 11.62d → none |  | was named Cadastrar Paciente |
| 31 | Atualizar Paciente Web | 2008-10-24 08:00 A | 2008-10-28 17:00 A |  | 0% → 100% | 10.62d → none |  | was named Atualizar Paciente |
| 32 | Consultar Paciente Web | 2008-10-24 08:00 A | 2008-10-29 17:00 A |  | 0% → 100% | 9.62d → none |  | was named Consultar Paciente |
| 34 | Cadastrar Profissional de Saude Web | 2008-10-24 08:00 A | 2008-10-29 17:00 A |  | 0% → 100% | 9.62d → none |  | was named Cadastrar Profissional de Saude |
| 35 | Atualizar Profissional de Saude Web | 2008-10-24 08:00 A | 2008-10-29 17:00 A |  | 0% → 100% | 9.62d → none |  | was named Atualizar Profissional de Saude |
| 36 | Consultar Profissional de Saude Web | 2008-10-24 08:00 A | 2008-10-29 17:00 A |  | 0% → 100% | 9.62d → none |  | was named Consultar Profissional de Saude |
| 37 | Homologação da release 2 | 2008-10-30 08:00 A |  |  | 0% → 5% | 9.62d → 26d |  | was named Homologação da release |
| 38 | Criação da apresentação da release 2 | 2008-10-31 08:00 A | 2008-10-31 17:00 A |  | 0% → 100% | 9.62d → none |  |  |
| 39 | Reunião de acompanhamento release 2 | 2008-11-03 08:00 A | 2008-11-03 10:00 A |  | 0% → 100% | 9.62d → none |  | was named Reunião de acompanhamento |
| 41 | Final Realese 2 | 2008-11-06 08:00 → 2008-11-13 08:00 A (+7d) | 2008-11-06 08:00 → 2008-11-13 08:00 (+7d) |  | 0% → 60% | 7.62d → 0d |  | constraint start no earlier than 2008-11-06 08:00 → must start on 2008-11-13 08:00 |
| 42 | **Realese 3** | 2008-11-06 08:00 → 2008-11-04 08:00 A (-2d) | 2008-11-21 16:00 → 2008-11-21 08:00 | 11.88d → 13d | 0% → 10% | 7.62d → 8.5d | 41 → 40 |  |
| 43 | **Implementação dos Casos de Uso Mobile** | 2008-11-06 08:00 → 2008-11-04 08:00 A (-2d) | 2008-11-14 14:00 → 2008-11-12 14:00 (-2d) |  | 0% → 23% | 7.62d → 13.88d |  |  |
| 44 | Atualizar Ficha Diária | 2008-11-06 08:00 → 2008-11-04 08:00 A (-2d) | 2008-11-06 17:00 → 2008-11-04 17:00 A (-2d) |  | 0% → 100% | 7.62d → none |  |  |
| 45 | Consultar Ficha Diária | 2008-11-06 08:00 → 2008-11-04 08:00 A (-2d) | 2008-11-06 17:00 → 2008-11-04 17:00 A (-2d) |  | 0% → 100% | 7.62d → none |  |  |
| 46 | Sincronizar Dados com Servidor | 2008-11-06 08:00 → 2008-11-04 08:00 (-2d) | 2008-11-14 11:00 → 2008-11-12 11:00 (-2d) |  |  | 7.62d → 14.12d |  |  |
| 47 | Popular Banco de Dados no Servidor | 2008-11-06 08:00 → 2008-11-04 08:00 (-2d) | 2008-11-06 17:00 → 2008-11-04 17:00 (-2d) |  |  | 13d → 19.5d |  |  |
| 48 | Reunião de Acompanhamento | 2008-11-14 11:00 → 2008-11-12 11:00 A (-2d) | 2008-11-14 14:00 → 2008-11-12 14:00 A (-2d) |  | 0% → 100% | 7.62d → none |  |  |
| 49 | **Implementação dos Casos de Uso Web** | 2008-11-14 14:00 → 2008-11-12 14:00 (-2d) | 2008-11-20 16:00 → 2008-11-18 16:00 (-2d) |  |  | 7.62d → 9.62d |  |  |
| 50 | Consolidar BPA | 2008-11-14 14:00 → 2008-11-12 14:00 (-2d) | 2008-11-20 14:00 → 2008-11-18 14:00 (-2d) |  |  | 7.62d → 9.62d |  |  |
| 51 | Gerar Relatório | 2008-11-14 14:00 → 2008-11-12 14:00 (-2d) | 2008-11-20 14:00 → 2008-11-18 14:00 (-2d) |  |  | 7.62d → 9.62d |  |  |
| 52 | Sincronizar Dispositivel Móvel | 2008-11-14 14:00 → 2008-11-12 14:00 (-2d) | 2008-11-20 14:00 → 2008-11-18 14:00 (-2d) |  |  | 7.62d → 9.62d |  |  |
| 53 | Reunião de acompanhamento | 2008-11-20 14:00 → 2008-11-18 14:00 (-2d) | 2008-11-20 16:00 → 2008-11-18 16:00 (-2d) |  |  | 7.62d → 9.62d |  |  |
| 54 | Homologação da release | 2008-11-20 16:00 → 2008-11-18 16:00 (-2d) | 2008-11-21 09:00 → 2008-11-19 09:00 (-2d) |  |  | 7.62d → 9.62d |  |  |
| 55 | Criação da apresentação da release 3 | 2008-11-21 09:00 → 2008-11-19 09:00 (-2d) | 2008-11-21 11:00 → 2008-11-19 11:00 (-2d) |  |  | 7.62d → 9.62d |  |  |
| 56 | Reunião de acompanhamento | 2008-11-21 11:00 → 2008-11-19 11:00 (-2d) | 2008-11-21 14:00 → 2008-11-19 14:00 (-2d) |  |  | 7.62d → 9.62d |  |  |
| 57 | Entrega da Realese 3 (Apresentação) | 2008-11-21 14:00 → 2008-11-19 14:00 (-2d) | 2008-11-21 16:00 → 2008-11-19 16:00 (-2d) |  |  | 7.62d → 9.62d |  |  |
| 58 | Final Realese 3 | 2008-11-21 16:00 → 2008-11-21 08:00 | 2008-11-21 16:00 → 2008-11-21 08:00 |  |  | 7.62d → 8.5d |  |  |
| 59 | **Release 4** | 2008-11-21 16:00 → 2008-11-21 08:00 |  | 10.12d → 11d |  |  |  |  |
| 60 | Criação da apresentação final (Documentação) | 2008-11-21 16:00 → 2008-11-21 08:00 | 2008-11-22 16:00 → 2008-11-21 17:00 (-1d) |  |  | 7.62d → 8.5d |  |  |
| 61 | Criação da apresentação final (Diagramação) | 2008-11-21 16:00 → 2008-11-21 08:00 | 2008-11-22 16:00 → 2008-11-21 17:00 (-1d) |  |  | 7.62d → 8.5d |  |  |
| 62 | Criação da apresentação final (Banco de Dados) | 2008-11-21 16:00 → 2008-11-21 08:00 | 2008-11-22 16:00 → 2008-11-21 17:00 (-1d) |  |  | 7.62d → 8.5d |  |  |
| 63 | Criação da apresentação final (Interfaces) | 2008-11-21 16:00 → 2008-11-21 08:00 | 2008-11-22 16:00 → 2008-11-21 17:00 (-1d) |  |  | 7.62d → 8.5d |  |  |
| 64 | Reunião de acompanhamento | 2008-11-22 16:00 → 2008-11-22 08:00 | 2008-11-24 09:00 → 2008-11-22 10:00 (-2d) |  |  | 7.62d → 8.5d |  |  |
| 65 | Criação da apresentação final (Fusão) | 2008-11-24 09:00 → 2008-11-22 10:00 (-2d) | 2008-11-24 16:00 → 2008-11-22 17:00 (-2d) |  |  | 7.62d → 8.5d |  |  |
| 66 | Entrega da Realese 4 (Ensaio) | 2008-11-24 16:00 → 2008-11-24 08:00 | 2008-11-25 11:00 → 2008-11-24 12:00 (-1d) |  |  | 7.62d → 8.5d |  |  |

## Version 5 (saved 2008-12-05)

Last finish stays 2008-12-05. Complete tasks 30 → 36.

Removed: 41 Final Realese 2

Changed:

| ID | Task | Start | Finish | Complete | Total float |
| --- | --- | --- | --- | --- | --- |
| 1 | **BPAD** |  |  | 63% → 71% |  |
| 2 | **Realese 1** |  | 2008-10-23 17:00 A | 97% → 100% | 31d → none |
| 12 | **Implementação dos Casos de Uso Web** |  | 2008-10-09 17:00 A | 88% → 100% | 41d → none |
| 13 | Efetuar Login |  | 2008-10-04 17:00 A | 50% → 100% | 45d → none |
| 21 | Final da realese 1 |  | 2008-10-23 17:00 A | 95% → 100% | 0d → none |
| 22 | **Realese 2** |  | 2008-11-13 08:00 A | 87% → 100% | 17d → none |
| 29 | **Implementação dos Casos de Uso Web** |  | 2008-11-03 17:00 A | 80% → 100% | 24d → none |
| 33 | Preencher Ficha Diária Web | 2008-10-24 08:00 A | 2008-10-29 17:00 A | 0% → 100% | 27d → none |
| 37 | Homologação da release 2 |  | 2008-10-30 17:00 A | 5% → 100% | 26d → none |
| 40 | Entrega da Realese 2 (Apresentação) | 2008-11-03 10:00 A | 2008-11-03 17:00 A | 0% → 100% | 0d → none |
| 42 | **Realese 3** |  |  | 10% → 11% | 8.5d → 11d |
| 55 | Criação da apresentação da release 3 | 2008-11-19 09:00 A | 2008-11-19 11:00 A | 0% → 100% | 9.62d → none |
| 56 | Reunião de acompanhamento | 2008-11-19 11:00 A |  | 0% → 50% |  |

## Version 6 (saved 2008-12-18)

Last finish stays 2008-12-05. Complete tasks 36 → 50.

Removed: 50 Consolidar BPA

Changed:

| ID | Task | Start | Finish | Complete | Total float | Predecessors |
| --- | --- | --- | --- | --- | --- | --- |
| 1 | **BPAD** |  |  | 71% → 99% |  |  |
| 42 | **Realese 3** |  |  | 11% → 97% |  |  |
| 43 | **Implementação dos Casos de Uso Mobile** |  | 2008-11-12 14:00 A | 23% → 100% | 17.12d → none |  |
| 46 | Sincronizar Dados com Servidor | 2008-11-04 08:00 A | 2008-11-12 11:00 A | 0% → 100% | 17.38d → none |  |
| 47 | Popular Banco de Dados no Servidor | 2008-11-04 08:00 A | 2008-11-04 17:00 A | 0% → 100% | 22.75d → none |  |
| 49 | **Implementação dos Casos de Uso Web** | 2008-11-12 14:00 A |  | 0% → 93% | 12.88d → 13.12d |  |
| 51 | Gerar Relatório | 2008-11-12 14:00 A | 2008-11-18 14:00 A | 0% → 100% | 12.88d → none | Consolidar BPASS → none |
| 52 | Sincronizar Dispositivel Móvel | 2008-11-12 14:00 A |  | 0% → 80% | 9.62d → 13.38d |  |
| 53 | Reunião de acompanhamento | 2008-11-18 14:00 A | 2008-11-18 16:00 A | 0% → 100% | 9.62d → none | Consolidar BPA, 51, 52 → 51, 52 |
| 54 | Homologação da release | 2008-11-18 16:00 A | 2008-11-19 09:00 A | 0% → 100% | 12.88d → none |  |
| 56 | Reunião de acompanhamento |  | 2008-11-19 14:00 A | 50% → 100% | 9.62d → none |  |
| 57 | Entrega da Realese 3 (Apresentação) | 2008-11-19 14:00 A | 2008-11-19 16:00 A | 0% → 100% | 9.62d → none |  |
| 59 | **Release 4** | 2008-11-21 08:00 A |  | 0% → 99% |  |  |
| 60 | Criação da apresentação final (Documentação) | 2008-11-21 08:00 A | 2008-11-21 17:00 A | 0% → 100% | 8.5d → none |  |
| 61 | Criação da apresentação final (Diagramação) | 2008-11-21 08:00 A | 2008-11-21 17:00 A | 0% → 100% | 8.5d → none |  |
| 62 | Criação da apresentação final (Banco de Dados) | 2008-11-21 08:00 A | 2008-11-21 17:00 A | 0% → 100% | 8.5d → none |  |
| 63 | Criação da apresentação final (Interfaces) | 2008-11-21 08:00 A | 2008-11-21 17:00 A | 0% → 100% | 8.5d → none |  |
| 64 | Reunião de acompanhamento | 2008-11-22 08:00 A | 2008-11-22 10:00 A | 0% → 100% | 8.5d → none |  |
| 65 | Criação da apresentação final (Fusão) | 2008-11-22 10:00 A | 2008-11-22 17:00 A | 0% → 100% | 8.5d → none |  |
| 66 | Entrega da Realese 4 (Ensaio) | 2008-11-24 08:00 A | 2008-11-24 12:00 A | 0% → 100% | 8.5d → none |  |
