# Cronograma

How a schedule from MS Project changed from version to version. A marks actual dates.

## Version 1 (saved 2008-10-03)

| ID | WBS | Task | Duration | Start | Finish | Predecessors | Total float |
| --- | --- | --- | --- | --- | --- | --- | --- |
| 1 | 1 | **BPAD** | 1d? | 2008-10-02 | 2008-10-02 |  | 0d |
| 2 | 1.1 | **Realese 1** | 1d? | 2008-10-02 | 2008-10-02 |  | 0d |
| 3 |  | Brainstorm Documentação | 1h | 2008-10-02 | 2008-10-02 |  | 0.88d |
| 4 | 1.1.2 | **Criação do Banco de Dados** | 0.38d | 2008-10-02 | 2008-10-02 |  | 0.62d |
| 5 |  | Script SQL | 2h | 2008-10-02 | 2008-10-02 |  | 0.62d |
| 6 |  | Popular Tabelas Auxiliares ao Banco | 1h | 2008-10-02 | 2008-10-02 | 5 | 0.62d |
| 7 | 1.1.3 | **Implementação dos Casos de Uso Mobile** | 1d? | 2008-10-02 | 2008-10-02 |  | 0d |
| 8 |  | Modelo de Navegação | 8h? | 2008-10-02 | 2008-10-02 |  | 0d |
| 9 |  | Criação de Protótipo de Interface | 1d? | 2008-10-02 | 2008-10-02 |  | 0d |
| 10 |  | Efetuar Login | 8h? | 2008-10-02 | 2008-10-02 |  | 0d |
| 11 | 1.1.4 | **Implementação dos Casos de Uso Web** | 1d? | 2008-10-02 | 2008-10-02 |  | 0d |
| 12 |  | Efetuar Login | 1d? | 2008-10-02 | 2008-10-02 |  | 0d |
| 13 |  | Cadastrar Unidade de Saude | 0.06d | 2008-10-02 | 2008-10-02 |  | 0.94d |
| 14 |  | Atualizar Unidade de Saude | 1d? | 2008-10-02 | 2008-10-02 |  | 0d |
| 15 |  | Consultar Unidade de Saude | 1d? | 2008-10-02 | 2008-10-02 |  | 0d |
| 16 |  | Cadastrar Profissional de Saude | 1d? | 2008-10-02 | 2008-10-02 |  | 0d |
| 19 |  | Realese 3 | 1d? | 2008-10-02 | 2008-10-02 |  | 0d |
| 22 | 3 | **Realese 4** | 1d? | 2008-10-02 | 2008-10-02 |  | 0d |
| 23 | 3.1 | **Implementação dos Casos de Uso Mobile** | 1d? | 2008-10-02 | 2008-10-02 |  | 0d |
| 24 |  | Modelo de Navegação | 1d? | 2008-10-02 | 2008-10-02 |  | 0d |
| 25 |  | Criação de Protótipo de Interface | 1d? | 2008-10-02 | 2008-10-02 |  | 0d |
| 26 |  | Efetuar Login | 1d? | 2008-10-02 | 2008-10-02 |  | 0d |
| 27 |  | Preencher Ficha Diária | 1d? | 2008-10-02 | 2008-10-02 |  | 0d |
| 28 |  | Cadastrar Paciente | 1d? | 2008-10-02 | 2008-10-02 |  | 0d |
| 29 |  | Consultar Paciente | 1d? | 2008-10-02 | 2008-10-02 |  | 0d |
| 30 |  | Atualizar Paciente | 1d? | 2008-10-02 | 2008-10-02 |  | 0d |
| 31 |  | Sincronizar Dados com Servidor | 1d? | 2008-10-02 | 2008-10-02 |  | 0d |
| 32 | 3.2 | **Implementação dos Casos de Uso Web** | 1d? | 2008-10-02 | 2008-10-02 |  | 0d |
| 33 |  | Atualizar Profissional de Saude | 1d? | 2008-10-02 | 2008-10-02 |  | 0d |
| 34 |  | Consultar Profissional de Saude | 1d? | 2008-10-02 | 2008-10-02 |  | 0d |
| 35 |  | Cadastrar Paciente | 1d? | 2008-10-02 | 2008-10-02 |  | 0d |
| 36 |  | Atualizar Paciente | 1d? | 2008-10-02 | 2008-10-02 |  | 0d |
| 37 |  | Consultar Paciente | 1d? | 2008-10-02 | 2008-10-02 |  | 0d |
| 38 |  | Preencher Ficha Diária | 1d? | 2008-10-02 | 2008-10-02 |  | 0d |
| 39 |  | Atualizar Ficha Diária | 1d? | 2008-10-02 | 2008-10-02 |  | 0d |
| 40 |  | Consultar Ficha Diária | 1d? | 2008-10-02 | 2008-10-02 |  | 0d |
| 41 |  | Consolidar BPA | 1d? | 2008-10-02 | 2008-10-02 |  | 0d |
| 42 |  | Sincronizar Dispositivel Móvel | 1d? | 2008-10-02 | 2008-10-02 |  | 0d |
| 43 |  | Gerar Relatório | 1d? | 2008-10-02 | 2008-10-02 |  | 0d |
| 45 |  | Dead Line | 0d | 2008-10-02 | 2008-10-02 |  | 1d |

## Version 2 (saved 2008-10-16)

Last finish 2008-10-02 → 2008-11-27 (+56d). Complete tasks 0 → 4.

Added:

| ID | Task | Duration | Start | Finish | Predecessors | Constraint | Resources |
| --- | --- | --- | --- | --- | --- | --- | --- |
| 4 | Publicar Cronograma no SVN | 1h | 2008-10-03 08:00 | 2008-10-03 09:00 |  | start no earlier than 2008-10-03 08:00 | George Melo |
| 17 | Homologação da release | 4h | 2008-10-16 08:00 | 2008-10-16 12:00 | 7, 11, 16 | start no earlier than 2008-10-16 08:00 | Humberto Marques |
| 18 | Criação da apresentação da realese 1 | 2h | 2008-10-16 13:00 | 2008-10-16 15:00 | 17 | finish no earlier than 2008-10-15 17:00 | George Melo |
| 19 | Reunião de acompanhamento | 2h | 2008-10-16 15:00 | 2008-10-16 17:00 | 18 |  |  |
| 20 | Entrega da realese 1 (Apresentção) | 1h | 2008-10-23 08:00 | 2008-10-23 09:00 | 18, 19 | start no earlier than 2008-10-23 08:00 |  |
| 21 | Final da realese 1 | 0d | 2008-10-23 09:00 | 2008-10-23 09:00 | 20 | start no earlier than 2008-10-17 08:00 |  |
| 22 | **Realese 2** | 6.5d | 2008-10-23 09:00 | 2008-10-31 14:00 | 21 |  |  |
| 28 | Reunião de acompanhamento | 2h | 2008-10-30 08:00 | 2008-10-30 10:00 | 24, 25, 27 | start no earlier than 2008-10-30 08:00 |  |
| 36 | Homologação da release | 8h | 2008-10-29 09:00 | 2008-10-30 09:00 | 35, 30, 31, 32, 33, 34 |  | George Melo |
| 37 | Criação da apresentação da release 2 | 8h | 2008-10-30 09:00 | 2008-10-31 09:00 | 36 |  | Antonio Carlos |
| 38 | Reunião de acompanhamento | 2h | 2008-10-31 09:00 | 2008-10-31 11:00 | 37 |  |  |
| 39 | Entrega da Realese 2 (Apresentação) | 2h | 2008-10-31 11:00 | 2008-10-31 14:00 | 38 |  |  |
| 40 | Final Realese 2 | 0d | 2008-10-31 14:00 | 2008-10-31 14:00 | 39 |  |  |
| 41 | **Realese 3** | 17.38d | 2008-10-31 14:00 | 2008-11-24 17:00 | 40 |  |  |
| 42 | **Implementação dos Casos de Uso Mobile** | 6.62d | 2008-10-31 14:00 | 2008-11-11 10:00 |  |  |  |
| 46 | Popular Banco de Dados no Servidor | 8h | 2008-10-31 14:00 | 2008-11-03 14:00 | 45SS |  | Humberto Marques |
| 47 | Reunião de Acompanhamento | 2h | 2008-11-11 08:00 | 2008-11-11 10:00 | 43, 44, 45, 46 |  |  |
| 52 | Reunião de acompanhamento | 2h | 2008-11-21 10:00 | 2008-11-21 12:00 | 49, 50, 51 |  |  |
| 53 | Homologação da release | 8h | 2008-11-21 13:00 | 2008-11-22 12:00 | 42, 48 |  | George Melo |
| 54 | Criação da apresentação da release 3 | 8h | 2008-11-22 13:00 | 2008-11-24 12:00 | 53 |  | George Melo |
| 55 | Reunião de acompanhamento | 2h | 2008-11-24 13:00 | 2008-11-24 15:00 | 54 |  |  |
| 56 | Entrega da Realese 3 (Apresentação) | 2h | 2008-11-24 15:00 | 2008-11-24 17:00 | 55 |  |  |
| 57 | Final Realese 3 | 0d | 2008-11-24 17:00 | 2008-11-24 17:00 | 56 |  |  |
| 58 | **Release 4** | 2.5d | 2008-11-25 08:00 | 2008-11-27 12:00 | 57 |  |  |
| 59 | Criação da apresentação final (Documentação) | 8h | 2008-11-25 08:00 | 2008-11-25 17:00 |  |  | George Melo |
| 60 | Criação da apresentação final (Diagramação) | 8h | 2008-11-25 08:00 | 2008-11-25 17:00 | 59SS |  | Antonio Carlos |
| 61 | Criação da apresentação final (Banco de Dados) | 8h | 2008-11-25 08:00 | 2008-11-25 17:00 | 60SS |  | Humberto Marques |
| 62 | Criação da apresentação final (Interfaces) | 8h | 2008-11-25 08:00 | 2008-11-25 17:00 | 61SS |  | Leszek Trajano |
| 63 | Reunião de acompanhamento | 2h | 2008-11-26 08:00 | 2008-11-26 10:00 | 62, 59, 60, 61 |  |  |
| 64 | Criação da apresentação final (Fusão) | 6h | 2008-11-26 10:00 | 2008-11-26 17:00 | 63, 59, 60, 61, 62 |  |  |
| 65 | Entrega da Realese 4 (Ensaio) | 4h | 2008-11-27 08:00 | 2008-11-27 12:00 | 64 |  |  |
| 66 | Final Realese 3 | 0d | 2008-11-27 12:00 | 2008-11-27 12:00 | 65 |  |  |

Removed: 22 Realese 4; 24 Modelo de Navegação; 25 Criação de Protótipo de Interface; 26 Efetuar Login; 38 Preencher Ficha Diária; 45 Dead Line

Changed:

| ID | Task | Start | Finish | Duration | Complete | Total float | Predecessors | Other |
| --- | --- | --- | --- | --- | --- | --- | --- | --- |
| 1 | **BPAD** | 2008-10-02 → 2008-10-03 08:00 A (+1d) | 2008-10-02 → 2008-11-27 12:00 (+56d) | 1d? → 41.5d | 0% → 4% |  |  |  |
| 2 | **Realese 1** | 2008-10-02 → 2008-10-03 08:00 A (+1d) | 2008-10-02 → 2008-10-23 09:00 (+21d) | 1d? → 15.12d | 0% → 35% | 0d → 26.38d |  |  |
| 3 | Brainstorm Documentação | 2008-10-02 → 2008-10-03 08:00 (+1d) | 2008-10-02 → 2008-10-03 09:00 (+1d) |  |  | 0.88d → 58.88d |  | constraint none → start no earlier than 2008-10-03 08:00 |
| 5 | **Criação do Banco de Dados** | 2008-10-02 → 2008-10-03 08:00 A (+1d) | 2008-10-02 → 2008-10-03 11:00 A (+1d) |  | 0% → 100% | 0.62d → none |  |  |
| 6 | Script SQL | 2008-10-02 → 2008-10-03 08:00 A (+1d) | 2008-10-02 → 2008-10-03 10:00 A (+1d) |  | 0% → 100% | 0.62d → none |  | constraint none → start no earlier than 2008-10-03 08:00 |
| 7 | Popular Tabelas Auxiliares ao Banco | 2008-10-02 → 2008-10-03 10:00 A (+1d) | 2008-10-02 → 2008-10-03 11:00 A (+1d) |  | 0% → 100% | 0.62d → none |  |  |
| 8 | Modelo de Navegação | 2008-10-02 → 2008-10-03 08:00 (+1d) | 2008-10-02 → 2008-10-03 10:00 (+1d) | 8h? → 2h |  | 0d → 58.75d |  | constraint none → start no earlier than 2008-10-03 08:00 |
| 9 | Criação de Protótipo de Interface | 2008-10-02 → 2008-10-06 08:00 A (+4d) | 2008-10-02 → 2008-10-07 17:00 A (+5d) | 1d? → 16h | 0% → 100% | 0d → none |  | constraint none → finish no earlier than 2008-10-07 17:00 |
| 10 | **Implementação dos Casos de Uso Mobile** | 2008-10-02 → 2008-10-08 08:00 A (+6d) | 2008-10-02 → 2008-10-08 17:00 A (+6d) | 1d? → 1d | 0% → 100% | 0d → none |  |  |
| 11 | Efetuar Login | 2008-10-02 → 2008-10-08 08:00 A (+6d) | 2008-10-02 → 2008-10-08 17:00 A (+6d) | 8h? → 8h | 0% → 100% | 0d → none | none → 7, 9 | constraint none → start no earlier than 2008-10-08 08:00 |
| 12 | **Implementação dos Casos de Uso Web** | 2008-10-02 → 2008-10-04 11:00 (+2d) | 2008-10-02 → 2008-10-09 17:00 (+7d) | 1d? → 4.62d |  | 0d → 8d |  |  |
| 13 | Efetuar Login | 2008-10-02 → 2008-10-04 11:00 (+2d) | 2008-10-02 → 2008-10-06 17:00 (+4d) | 1d? → 13h |  | 0d → 8d | none → 7 | constraint none → finish no earlier than 2008-10-06 17:00 |
| 14 | Cadastrar Unidade de Saude | 2008-10-02 → 2008-10-07 08:00 (+5d) | 2008-10-02 → 2008-10-07 17:00 (+5d) | 0.06d → 8h |  | 0.94d → 50.75d | none → 13 | constraint none → finish no earlier than 2008-10-07 17:00 |
| 15 | Atualizar Unidade de Saude | 2008-10-02 → 2008-10-08 08:00 (+6d) | 2008-10-02 → 2008-10-08 17:00 (+6d) | 1d? → 8h |  | 0d → 50.75d | none → 14 | constraint none → finish no earlier than 2008-10-08 17:00; resources Leszek Trajano → Humberto Marques |
| 16 | Consultar Unidade de Saude | 2008-10-02 → 2008-10-09 08:00 (+7d) | 2008-10-02 → 2008-10-09 17:00 (+7d) | 1d? → 8h |  | 0d → 50.75d | none → 15 | constraint none → finish no earlier than 2008-10-09 17:00 |
| 23 | **Implementação dos Casos de Uso Mobile** | 2008-10-02 → 2008-10-23 09:00 (+21d) | 2008-10-02 → 2008-10-30 10:00 (+28d) | 1d? → 5.12d |  | 0d → 21.25d |  |  |
| 24 | Cadastrar Paciente | 2008-10-02 → 2008-10-23 09:00 (+21d) | 2008-10-02 → 2008-10-29 09:00 (+27d) | 1d? → 32h |  | 0d → 22.12d |  | constraint none → finish no earlier than 2008-10-23 17:00; resources none → George Melo |
| 25 | Consultar Paciente | 2008-10-02 → 2008-10-23 09:00 (+21d) | 2008-10-02 → 2008-10-29 09:00 (+27d) | 1d? → 32h |  | 0d → 22.12d | none → 24SS | constraint none → finish no earlier than 2008-10-23 17:00; resources none → Antonio Carlos |
| 26 | Atualizar Paciente | 2008-10-02 → 2008-10-23 09:00 (+21d) | 2008-10-02 → 2008-10-29 09:00 (+27d) | 1d? → 32h |  | 0d → 22.38d | none → 25SS | constraint none → finish no earlier than 2008-10-23 17:00; resources none → Leszek Trajano |
| 27 | Preencher Ficha Diária | 2008-10-02 → 2008-10-23 09:00 (+21d) | 2008-10-02 → 2008-10-29 09:00 (+27d) | 1d? → 32h |  | 0d → 22.12d | none → 26SS | constraint none → finish no earlier than 2008-10-23 17:00; resources none → Humberto Marques |
| 29 | **Implementação dos Casos de Uso Web** | 2008-10-02 → 2008-10-23 09:00 (+21d) | 2008-10-02 → 2008-10-31 14:00 (+29d) | 1d? → 6.5d |  |  |  |  |
| 30 | Cadastrar Paciente | 2008-10-02 → 2008-10-23 09:00 (+21d) | 2008-10-02 → 2008-10-27 09:00 (+25d) | 1d? → 16h |  | 0d → 2d |  | resources none → Humberto Marques |
| 31 | Atualizar Paciente | 2008-10-02 → 2008-10-23 09:00 (+21d) | 2008-10-02 → 2008-10-28 09:00 (+26d) | 1d? → 24h |  | 0d → 1d |  | resources none → Humberto Marques |
| 32 | Consultar Paciente | 2008-10-02 → 2008-10-23 09:00 (+21d) | 2008-10-02 → 2008-10-29 09:00 (+27d) | 1d? → 32h |  |  |  | resources none → Humberto Marques |
| 33 | Cadastrar Profissional de Saude | 2008-10-02 → 2008-10-23 09:00 (+21d) | 2008-10-02 → 2008-10-29 09:00 (+27d) | 1d? → 32h |  |  |  | resources none → George Melo |
| 34 | Atualizar Profissional de Saude | 2008-10-02 → 2008-10-23 09:00 (+21d) | 2008-10-02 → 2008-10-29 09:00 (+27d) | 1d? → 32h |  |  |  | resources none → Antonio Carlos |
| 35 | Consultar Profissional de Saude | 2008-10-02 → 2008-10-23 09:00 (+21d) | 2008-10-02 → 2008-10-29 09:00 (+27d) | 1d? → 32h |  |  |  | resources none → Leszek Trajano |
| 43 | Atualizar Ficha Diária | 2008-10-02 → 2008-10-31 14:00 (+29d) | 2008-10-02 → 2008-11-03 14:00 (+32d) | 1d? → 8h |  |  |  | resources none → Leszek Trajano |
| 44 | Consultar Ficha Diária | 2008-10-02 → 2008-10-31 14:00 (+29d) | 2008-10-02 → 2008-11-03 14:00 (+32d) | 1d? → 8h |  |  | none → 43SS | resources none → George Melo |
| 45 | Sincronizar Dados com Servidor | 2008-10-02 → 2008-10-31 14:00 (+29d) | 2008-10-02 → 2008-11-10 17:00 (+39d) | 1d? → 51h |  |  | none → 44SS | resources none → Antonio Carlos |
| 48 | **Implementação dos Casos de Uso Web** | 2008-10-02 → 2008-11-11 10:00 (+40d) | 2008-10-02 → 2008-11-21 12:00 (+50d) | 1d? → 8.25d |  |  | none → 47 | was named Realese 3 |
| 49 | Consolidar BPA | 2008-10-02 → 2008-11-11 10:00 (+40d) | 2008-10-02 → 2008-11-21 10:00 (+50d) | 1d? → 64h |  |  |  | resources none → Humberto Marques |
| 50 | Gerar Relatório | 2008-10-02 → 2008-11-11 10:00 (+40d) | 2008-10-02 → 2008-11-17 10:00 (+46d) | 1d? → 32h |  |  | none → 49SS | resources none → Leszek Trajano |
| 51 | Sincronizar Dispositivel Móvel | 2008-10-02 → 2008-11-11 10:00 (+40d) | 2008-10-02 → 2008-11-21 10:00 (+50d) | 1d? → 64h |  |  | none → 50SS | resources none → Antonio Carlos |

## Version 3 (saved 2008-10-29)

Last finish 2008-11-27 → 2008-12-05 (+8d). Complete tasks 4 → 20.

Added:

| ID | Task | Duration | Start | Finish | Constraint | Resources |
| --- | --- | --- | --- | --- | --- | --- |
| 33 | Preencher Ficha Diária Web | 32h | 2008-10-24 08:00 | 2008-10-29 17:00 | finish no earlier than 2008-10-23 17:00 | Humberto Marques |

Changed:

| ID | Task | Start | Finish | Duration | Complete | Total float | Other |
| --- | --- | --- | --- | --- | --- | --- | --- |
| 1 | **BPAD** |  | 2008-11-27 12:00 → 2008-12-05 08:00 (+8d) | 41.5d → 47d | 4% → 40% |  |  |
| 2 | **Realese 1** |  | 2008-10-23 09:00 → 2008-10-23 17:00 | 15.12d → 16d | 35% → 97% | 26.38d → 31d |  |
| 3 | Brainstorm Documentação | 2008-10-03 08:00 A | 2008-10-03 09:00 → 2008-10-03 17:00 A | 1h → 8h | 0% → 100% | 58.88d → none |  |
| 4 | Publicar Cronograma no SVN | 2008-10-03 08:00 A | 2008-10-03 09:00 → 2008-10-03 17:00 A | 1h → 8h | 0% → 100% | 58.88d → none |  |
| 5 | **Criação do Banco de Dados** |  | 2008-10-03 11:00 A → 2008-10-03 17:00 A | 0.38d → 1d |  |  |  |
| 6 | Script SQL |  | 2008-10-03 10:00 A → 2008-10-03 17:00 A | 2h → 8h |  |  |  |
| 8 | Modelo de Navegação | 2008-10-03 08:00 A | 2008-10-03 10:00 → 2008-10-03 17:00 A | 2h → 8h | 0% → 100% | 58.75d → none |  |
| 11 | Efetuar Login Mobile |  |  |  |  |  | was named Efetuar Login |
| 12 | **Implementação dos Casos de Uso Web** | 2008-10-04 11:00 → 2008-10-04 08:00 A |  | 4.62d → 5d | 0% → 88% | 8d → 41d |  |
| 13 | Efetuar Login | 2008-10-04 11:00 → 2008-10-04 08:00 A | 2008-10-06 17:00 → 2008-10-04 17:00 (-2d) | 13h → 8h | 0% → 50% | 8d → 45d | constraint finish no earlier than 2008-10-06 17:00 → start no earlier than 2008-10-04 08:00 |
| 14 | Cadastrar Unidade de Saude Web | 2008-10-07 08:00 A | 2008-10-07 17:00 A |  | 0% → 100% | 50.75d → none | was named Cadastrar Unidade de Saude |
| 15 | Atualizar Unidade de Saude Web | 2008-10-08 08:00 A | 2008-10-08 17:00 A |  | 0% → 100% | 50.75d → none | was named Atualizar Unidade de Saude |
| 16 | Consultar Unidade de Saude Web | 2008-10-09 08:00 A | 2008-10-09 17:00 A |  | 0% → 100% | 50.75d → none | was named Consultar Unidade de Saude |
| 17 | Homologação da release 1 | 2008-10-16 08:00 A | 2008-10-16 12:00 → 2008-10-16 17:00 A | 4h → 8h | 0% → 100% | 4d → none | was named Homologação da release |
| 18 | Criação da apresentação da realese 1 | 2008-10-16 13:00 → 2008-10-21 08:00 A (+5d) | 2008-10-16 15:00 → 2008-10-21 17:00 A (+5d) | 2h → 8h | 0% → 100% | 4d → none | constraint finish no earlier than 2008-10-15 17:00 → start no earlier than 2008-10-21 08:00 |
| 19 | Reunião de acompanhamento 1 | 2008-10-16 15:00 → 2008-10-22 08:00 A (+6d) | 2008-10-16 17:00 → 2008-10-22 17:00 A (+6d) | 2h → 8h | 0% → 100% | 4d → none | was named Reunião de acompanhamento; constraint none → start no earlier than 2008-10-22 08:00 |
| 20 | Entrega da realese 1 (Apresentção) | 2008-10-23 08:00 A | 2008-10-23 09:00 → 2008-10-23 17:00 A | 1h → 8h | 0% → 100% | 0d → none |  |
| 21 | Final da realese 1 | 2008-10-23 09:00 → 2008-10-23 17:00 A | 2008-10-23 09:00 → 2008-10-23 17:00 |  | 0% → 95% |  |  |
| 22 | **Realese 2** | 2008-10-23 09:00 → 2008-10-24 08:00 A (+1d) | 2008-10-31 14:00 → 2008-11-06 08:00 (+6d) | 6.5d → 9d | 0% → 47% | 0d → 22d |  |
| 23 | **Implementação dos Casos de Uso Mobile** | 2008-10-23 09:00 → 2008-10-24 08:00 (+1d) | 2008-10-30 10:00 → 2008-10-30 17:00 | 5.12d → 5d |  | 21.25d → 26d |  |
| 24 | Cadastrar Paciente Mobile | 2008-10-23 09:00 → 2008-10-24 08:00 (+1d) | 2008-10-29 09:00 → 2008-10-29 17:00 |  |  | 22.12d → 26d | was named Cadastrar Paciente |
| 25 | Consultar Paciente Mobile | 2008-10-23 09:00 → 2008-10-24 08:00 (+1d) | 2008-10-29 09:00 → 2008-10-29 17:00 |  |  | 22.12d → 26d | was named Consultar Paciente |
| 26 | Atualizar Paciente Mobile | 2008-10-23 09:00 → 2008-10-24 08:00 (+1d) | 2008-10-29 09:00 → 2008-10-29 17:00 |  |  | 22.38d → 27d | was named Atualizar Paciente |
| 27 | Preencher Ficha Diária Mobile | 2008-10-23 09:00 → 2008-10-24 08:00 (+1d) | 2008-10-29 09:00 → 2008-10-29 17:00 |  |  | 22.12d → 26d | was named Preencher Ficha Diária |
| 28 | Reunião de acompanhamento release 2 |  | 2008-10-30 10:00 → 2008-10-30 17:00 | 2h → 8h |  | 21.25d → 26d | was named Reunião de acompanhamento |
| 29 | **Implementação dos Casos de Uso Web** | 2008-10-23 09:00 → 2008-10-24 08:00 A (+1d) | 2008-10-31 14:00 → 2008-11-03 17:00 (+3d) | 6.5d → 7d | 0% → 75% | 0d → 24d |  |
| 30 | Cadastrar Paciente Web | 2008-10-23 09:00 → 2008-10-24 08:00 A (+1d) | 2008-10-27 09:00 → 2008-10-27 17:00 A |  | 0% → 100% | 2d → none | was named Cadastrar Paciente |
| 31 | Atualizar Paciente Web | 2008-10-23 09:00 → 2008-10-24 08:00 A (+1d) | 2008-10-28 09:00 → 2008-10-28 17:00 A |  | 0% → 100% | 1d → none | was named Atualizar Paciente |
| 32 | Consultar Paciente Web | 2008-10-23 09:00 → 2008-10-24 08:00 A (+1d) | 2008-10-29 09:00 → 2008-10-29 17:00 A |  | 0% → 100% | 0d → none | was named Consultar Paciente |
| 34 | Cadastrar Profissional de Saude Web | 2008-10-23 09:00 → 2008-10-24 08:00 A (+1d) | 2008-10-29 09:00 → 2008-10-29 17:00 A |  | 0% → 100% | 0d → none | was named Cadastrar Profissional de Saude |
| 35 | Atualizar Profissional de Saude Web | 2008-10-23 09:00 → 2008-10-24 08:00 A (+1d) | 2008-10-29 09:00 → 2008-10-29 17:00 A |  | 0% → 100% | 0d → none | was named Atualizar Profissional de Saude |
| 36 | Consultar Profissional de Saude Web | 2008-10-23 09:00 → 2008-10-24 08:00 A (+1d) | 2008-10-29 09:00 → 2008-10-29 17:00 A |  | 0% → 100% | 0d → none | was named Consultar Profissional de Saude |
| 37 | Homologação da release 2 | 2008-10-29 09:00 → 2008-10-30 08:00 (+1d) | 2008-10-30 09:00 → 2008-10-30 17:00 |  |  | 0d → 2d | was named Homologação da release |
| 38 | Criação da apresentação da release 2 | 2008-10-30 09:00 → 2008-10-31 08:00 (+1d) | 2008-10-31 09:00 → 2008-10-31 17:00 |  |  | 0d → 2d |  |
| 39 | Reunião de acompanhamento release 2 | 2008-10-31 09:00 → 2008-11-03 08:00 (+3d) | 2008-10-31 11:00 → 2008-11-03 10:00 (+3d) |  |  | 0d → 2d | was named Reunião de acompanhamento |
| 40 | Entrega da Realese 2 (Apresentação) | 2008-10-31 11:00 → 2008-11-03 10:00 (+3d) | 2008-10-31 14:00 → 2008-11-03 17:00 (+3d) | 2h → 6h |  | 0d → 9.62d | constraint none → start no earlier than 2008-11-03 08:00 |
| 41 | Final Realese 2 | 2008-10-31 14:00 → 2008-11-06 08:00 A (+6d) | 2008-10-31 14:00 → 2008-11-06 08:00 (+6d) |  | 0% → 60% | 0d → 7.62d | constraint none → start no earlier than 2008-11-06 08:00 |
| 42 | **Realese 3** | 2008-10-31 14:00 → 2008-11-06 08:00 (+6d) | 2008-11-24 17:00 → 2008-11-21 16:00 (-3d) | 17.38d → 11.88d |  | 0d → 7.62d |  |
| 43 | **Implementação dos Casos de Uso Mobile** | 2008-10-31 14:00 → 2008-11-06 08:00 (+6d) | 2008-11-11 10:00 → 2008-11-14 14:00 (+3d) |  |  | 0d → 7.62d |  |
| 44 | Atualizar Ficha Diária | 2008-10-31 14:00 → 2008-11-06 08:00 (+6d) | 2008-11-03 14:00 → 2008-11-06 17:00 (+3d) |  |  | 0d → 7.62d |  |
| 45 | Consultar Ficha Diária | 2008-10-31 14:00 → 2008-11-06 08:00 (+6d) | 2008-11-03 14:00 → 2008-11-06 17:00 (+3d) |  |  | 0d → 7.62d |  |
| 46 | Sincronizar Dados com Servidor | 2008-10-31 14:00 → 2008-11-06 08:00 (+6d) | 2008-11-10 17:00 → 2008-11-14 11:00 (+4d) |  |  | 0d → 7.62d |  |
| 47 | Popular Banco de Dados no Servidor | 2008-10-31 14:00 → 2008-11-06 08:00 (+6d) | 2008-11-03 14:00 → 2008-11-06 17:00 (+3d) |  |  | 5.38d → 13d |  |
| 48 | Reunião de Acompanhamento | 2008-11-11 08:00 → 2008-11-14 11:00 (+3d) | 2008-11-11 10:00 → 2008-11-14 14:00 (+3d) |  |  | 0d → 7.62d |  |
| 49 | **Implementação dos Casos de Uso Web** | 2008-11-11 10:00 → 2008-11-14 14:00 (+3d) | 2008-11-21 12:00 → 2008-11-20 16:00 (-1d) | 8.25d → 4.25d |  | 0d → 7.62d |  |
| 50 | Consolidar BPA | 2008-11-11 10:00 → 2008-11-14 14:00 (+3d) | 2008-11-21 10:00 → 2008-11-20 14:00 (-1d) | 64h → 32h |  | 0d → 7.62d |  |
| 51 | Gerar Relatório | 2008-11-11 10:00 → 2008-11-14 14:00 (+3d) | 2008-11-17 10:00 → 2008-11-20 14:00 (+3d) |  |  | 0d → 7.62d |  |
| 52 | Sincronizar Dispositivel Móvel | 2008-11-11 10:00 → 2008-11-14 14:00 (+3d) | 2008-11-21 10:00 → 2008-11-20 14:00 (-1d) | 64h → 32h |  | 0d → 7.62d |  |
| 53 | Reunião de acompanhamento | 2008-11-21 10:00 → 2008-11-20 14:00 (-1d) | 2008-11-21 12:00 → 2008-11-20 16:00 (-1d) |  |  | 0d → 7.62d |  |
| 54 | Homologação da release | 2008-11-21 13:00 → 2008-11-20 16:00 (-1d) | 2008-11-22 12:00 → 2008-11-21 09:00 (-1d) | 8h → 2h |  | 0d → 7.62d |  |
| 55 | Criação da apresentação da release 3 | 2008-11-22 13:00 → 2008-11-21 09:00 (-1d) | 2008-11-24 12:00 → 2008-11-21 11:00 (-3d) | 8h → 2h |  | 0d → 7.62d |  |
| 56 | Reunião de acompanhamento | 2008-11-24 13:00 → 2008-11-21 11:00 (-3d) | 2008-11-24 15:00 → 2008-11-21 14:00 (-3d) |  |  | 0d → 7.62d |  |
| 57 | Entrega da Realese 3 (Apresentação) | 2008-11-24 15:00 → 2008-11-21 14:00 (-3d) | 2008-11-24 17:00 → 2008-11-21 16:00 (-3d) |  |  | 0d → 7.62d |  |
| 58 | Final Realese 3 | 2008-11-24 17:00 → 2008-11-21 16:00 (-3d) | 2008-11-24 17:00 → 2008-11-21 16:00 (-3d) |  |  | 0d → 7.62d | constraint none → start no earlier than 2008-11-21 08:00 |
| 59 | **Release 4** | 2008-11-25 08:00 → 2008-11-21 16:00 (-4d) | 2008-11-27 12:00 → 2008-12-05 08:00 (+8d) | 2.5d → 10.12d |  |  |  |
| 60 | Criação da apresentação final (Documentação) | 2008-11-25 08:00 → 2008-11-21 16:00 (-4d) | 2008-11-25 17:00 → 2008-11-22 16:00 (-3d) |  |  | 0d → 7.62d |  |
| 61 | Criação da apresentação final (Diagramação) | 2008-11-25 08:00 → 2008-11-21 16:00 (-4d) | 2008-11-25 17:00 → 2008-11-22 16:00 (-3d) |  |  | 0d → 7.62d |  |
| 62 | Criação da apresentação final (Banco de Dados) | 2008-11-25 08:00 → 2008-11-21 16:00 (-4d) | 2008-11-25 17:00 → 2008-11-22 16:00 (-3d) |  |  | 0d → 7.62d |  |
| 63 | Criação da apresentação final (Interfaces) | 2008-11-25 08:00 → 2008-11-21 16:00 (-4d) | 2008-11-25 17:00 → 2008-11-22 16:00 (-3d) |  |  | 0d → 7.62d |  |
| 64 | Reunião de acompanhamento | 2008-11-26 08:00 → 2008-11-22 16:00 (-4d) | 2008-11-26 10:00 → 2008-11-24 09:00 (-2d) |  |  | 0d → 7.62d |  |
| 65 | Criação da apresentação final (Fusão) | 2008-11-26 10:00 → 2008-11-24 09:00 (-2d) | 2008-11-26 17:00 → 2008-11-24 16:00 (-2d) |  |  | 0d → 7.62d |  |
| 66 | Entrega da Realese 4 (Ensaio) | 2008-11-27 08:00 → 2008-11-24 16:00 (-3d) | 2008-11-27 12:00 → 2008-11-25 11:00 (-2d) |  |  | 0d → 7.62d |  |
| 67 | Final Realese 3 | 2008-11-27 12:00 → 2008-12-05 08:00 (+8d) | 2008-11-27 12:00 → 2008-12-05 08:00 (+8d) |  |  |  | constraint none → start no earlier than 2008-12-05 08:00 |

## Version 4 (saved 2008-11-07)

Note of the change: Atualização da data de entrega da release 02

Last finish stays 2008-12-05.

Changed:

| ID | Task | Start | Finish | Duration | Total float | Predecessors | Other |
| --- | --- | --- | --- | --- | --- | --- | --- |
| 22 | **Realese 2** |  | 2008-11-06 08:00 → 2008-11-13 08:00 (+7d) | 9d → 14d | 22d → 17d |  |  |
| 41 | Final Realese 2 | 2008-11-06 08:00 A → 2008-11-13 08:00 A (+7d) | 2008-11-06 08:00 → 2008-11-13 08:00 (+7d) |  | 7.62d → 0d |  | constraint start no earlier than 2008-11-06 08:00 → must start on 2008-11-13 08:00 |
| 42 | **Realese 3** | 2008-11-06 08:00 → 2008-11-04 08:00 (-2d) | 2008-11-21 16:00 → 2008-11-21 08:00 | 11.88d → 13d | 7.62d → 8.5d | 41 → 40 |  |
| 43 | **Implementação dos Casos de Uso Mobile** | 2008-11-06 08:00 → 2008-11-04 08:00 (-2d) | 2008-11-14 14:00 → 2008-11-12 14:00 (-2d) |  | 7.62d → 9.62d |  |  |
| 44 | Atualizar Ficha Diária | 2008-11-06 08:00 → 2008-11-04 08:00 (-2d) | 2008-11-06 17:00 → 2008-11-04 17:00 (-2d) |  | 7.62d → 9.62d |  |  |
| 45 | Consultar Ficha Diária | 2008-11-06 08:00 → 2008-11-04 08:00 (-2d) | 2008-11-06 17:00 → 2008-11-04 17:00 (-2d) |  | 7.62d → 9.62d |  |  |
| 46 | Sincronizar Dados com Servidor | 2008-11-06 08:00 → 2008-11-04 08:00 (-2d) | 2008-11-14 11:00 → 2008-11-12 11:00 (-2d) |  | 7.62d → 9.62d |  |  |
| 47 | Popular Banco de Dados no Servidor | 2008-11-06 08:00 → 2008-11-04 08:00 (-2d) | 2008-11-06 17:00 → 2008-11-04 17:00 (-2d) |  | 13d → 15d |  |  |
| 48 | Reunião de Acompanhamento | 2008-11-14 11:00 → 2008-11-12 11:00 (-2d) | 2008-11-14 14:00 → 2008-11-12 14:00 (-2d) |  | 7.62d → 9.62d |  |  |
| 49 | **Implementação dos Casos de Uso Web** | 2008-11-14 14:00 → 2008-11-12 14:00 (-2d) | 2008-11-20 16:00 → 2008-11-18 16:00 (-2d) |  | 7.62d → 9.62d |  |  |
| 50 | Consolidar BPA | 2008-11-14 14:00 → 2008-11-12 14:00 (-2d) | 2008-11-20 14:00 → 2008-11-18 14:00 (-2d) |  | 7.62d → 9.62d |  |  |
| 51 | Gerar Relatório | 2008-11-14 14:00 → 2008-11-12 14:00 (-2d) | 2008-11-20 14:00 → 2008-11-18 14:00 (-2d) |  | 7.62d → 9.62d |  |  |
| 52 | Sincronizar Dispositivel Móvel | 2008-11-14 14:00 → 2008-11-12 14:00 (-2d) | 2008-11-20 14:00 → 2008-11-18 14:00 (-2d) |  | 7.62d → 9.62d |  |  |
| 53 | Reunião de acompanhamento | 2008-11-20 14:00 → 2008-11-18 14:00 (-2d) | 2008-11-20 16:00 → 2008-11-18 16:00 (-2d) |  | 7.62d → 9.62d |  |  |
| 54 | Homologação da release | 2008-11-20 16:00 → 2008-11-18 16:00 (-2d) | 2008-11-21 09:00 → 2008-11-19 09:00 (-2d) |  | 7.62d → 9.62d |  |  |
| 55 | Criação da apresentação da release 3 | 2008-11-21 09:00 → 2008-11-19 09:00 (-2d) | 2008-11-21 11:00 → 2008-11-19 11:00 (-2d) |  | 7.62d → 9.62d |  |  |
| 56 | Reunião de acompanhamento | 2008-11-21 11:00 → 2008-11-19 11:00 (-2d) | 2008-11-21 14:00 → 2008-11-19 14:00 (-2d) |  | 7.62d → 9.62d |  |  |
| 57 | Entrega da Realese 3 (Apresentação) | 2008-11-21 14:00 → 2008-11-19 14:00 (-2d) | 2008-11-21 16:00 → 2008-11-19 16:00 (-2d) |  | 7.62d → 9.62d |  |  |
| 58 | Final Realese 3 | 2008-11-21 16:00 → 2008-11-21 08:00 | 2008-11-21 16:00 → 2008-11-21 08:00 |  | 7.62d → 8.5d |  |  |
| 59 | **Release 4** | 2008-11-21 16:00 → 2008-11-21 08:00 |  | 10.12d → 11d |  |  |  |
| 60 | Criação da apresentação final (Documentação) | 2008-11-21 16:00 → 2008-11-21 08:00 | 2008-11-22 16:00 → 2008-11-21 17:00 (-1d) |  | 7.62d → 8.5d |  |  |
| 61 | Criação da apresentação final (Diagramação) | 2008-11-21 16:00 → 2008-11-21 08:00 | 2008-11-22 16:00 → 2008-11-21 17:00 (-1d) |  | 7.62d → 8.5d |  |  |
| 62 | Criação da apresentação final (Banco de Dados) | 2008-11-21 16:00 → 2008-11-21 08:00 | 2008-11-22 16:00 → 2008-11-21 17:00 (-1d) |  | 7.62d → 8.5d |  |  |
| 63 | Criação da apresentação final (Interfaces) | 2008-11-21 16:00 → 2008-11-21 08:00 | 2008-11-22 16:00 → 2008-11-21 17:00 (-1d) |  | 7.62d → 8.5d |  |  |
| 64 | Reunião de acompanhamento | 2008-11-22 16:00 → 2008-11-22 08:00 | 2008-11-24 09:00 → 2008-11-22 10:00 (-2d) |  | 7.62d → 8.5d |  |  |
| 65 | Criação da apresentação final (Fusão) | 2008-11-24 09:00 → 2008-11-22 10:00 (-2d) | 2008-11-24 16:00 → 2008-11-22 17:00 (-2d) |  | 7.62d → 8.5d |  |  |
| 66 | Entrega da Realese 4 (Ensaio) | 2008-11-24 16:00 → 2008-11-24 08:00 | 2008-11-25 11:00 → 2008-11-24 12:00 (-1d) |  | 7.62d → 8.5d |  |  |
